# Neuer Aussenstandort

How a schedule from MS Project changed from version to version. A marks actual dates.

## Version 1 (saved 2025-05-12)

Note of the change: Create Projektstrukturplan_Neuer_Aussenstandort_Bruderer_Strainovic_v1.0.mpp

| ID | WBS | Task | Duration | Start | Finish | Predecessors | Total float |
| --- | --- | --- | --- | --- | --- | --- | --- |
| 1 | 1 | **Vor-Analyse** | 3d | 2025-05-26 | 2025-05-28 |  | 0d |
| 2 |  | Projektauftrag prüfen | 1d | 2025-05-26 | 2025-05-26 |  | 0d |
| 3 |  | Rahmenbedingungen klären | 1d | 2025-05-27 | 2025-05-27 | 2 | 0d |
| 4 |  | Risikoanalyse | 1d | 2025-05-28 | 2025-05-28 | 3 | 0d |
| 5 |  | MS: Projekt bewilligt | 0d | 2025-05-26 | 2025-05-26 |  | 3d |
| 6 | 2 | **Konzept-Evaluation** | 1d? | 2025-05-28 | 2025-05-29 | 1 | 0d |
| 7 |  | Pflichtenheft | 1d | 2025-05-29 | 2025-05-29 |  | 0d |
| 8 |  | Expertengespräche durchführen | 1d? | 2025-05-29 | 2025-05-29 |  | 0d |
| 9 |  | MS: Projekt erfolgreich zu Ende gebracht | 0d | 2025-05-28 | 2025-05-28 |  | 1d |
| 10 | 3 | **Umsetzungsplanung** | 22d | 2025-05-29 | 2025-06-30 | 6 | 0d |
| 11 |  | Projektstrukturplan erstellen | 2d | 2025-05-30 | 2025-06-02 |  | 0d |
| 12 |  | Liegenschaftsliste erstellen | 4d | 2025-06-03 | 2025-06-06 | 11 | 0d |
| 13 |  | Liegenschaften besichtigen | 15d | 2025-06-09 | 2025-06-27 | 12 | 0d |
| 14 |  | Nutzwertanalyse der Liegenschaften | 1d | 2025-06-30 | 2025-06-30 | 13 | 0d |
| 15 |  | MS: Für ein Gebäude entschieden | 0d | 2025-05-29 | 2025-05-29 |  | 22d |
| 16 | 4 | **Realisierung** | 21d | 2025-06-30 | 2025-07-29 | 10 | 0d |
| 17 |  | Mietvertrag prüfen & unterzeichnen | 2d | 2025-07-01 | 2025-07-02 |  | 6d |
| 18 |  | Einrichtung bestellen | 21d | 2025-07-01 | 2025-07-29 |  | 0d |
| 19 |  | Gebäude übernehmen | 3d | 2025-07-03 | 2025-07-07 | 17 | 6d |
| 20 |  | IT-Infrastruktur einrichten | 10d | 2025-07-08 | 2025-07-21 | 19 | 6d |
| 21 |  | MS: Standort bereit zur Einführung | 0d | 2025-06-30 | 2025-06-30 |  | 21d |
| 22 | 5 | **Einführung** | 3d | 2025-07-29 | 2025-08-01 | 16 | 0d |
| 23 |  | Neuer Standort den Mitarbeitern übergeben | 1d | 2025-07-30 | 2025-07-30 |  | 2d |
| 24 |  | Einweihungsfest | 2d | 2025-07-30 | 2025-07-31 |  | 0d |
| 25 |  | Abschlussmeeting | 1d | 2025-08-01 | 2025-08-01 | 24 | 0d |
| 26 |  | MS: Projektergebnis erfolgreich getestet und eingeführt | 0d | 2025-07-29 | 2025-07-29 |  | 3d |

## Version 2 (saved 2025-05-13)

Note of the change: Update Projektstrukturplan_Neuer_Aussenstandort_Bruderer_Strainovic_v1.0.mpp

Last finish 2025-08-01 → 2025-08-25 (+24d).

Added:

| ID | Task | Duration | Start | Finish | Resources |
| --- | --- | --- | --- | --- | --- |
| 2 | Projektauftrag erstellen | 1d | 2025-05-26 | 2025-05-26 | Rainer Ernst [50%] |
| 16 | Offerten für Einrichtung einholen | 5d | 2025-06-04 | 2025-06-11 | Marvin Beak [50%] |

Changed:

| ID | Task | Start | Finish | Duration | Total float | Predecessors | Other |
| --- | --- | --- | --- | --- | --- | --- | --- |
| 1 | **Vor-Analyse** |  | 2025-05-28 → 2025-05-29 (+1d) | 3d → 4d | 0d → none |  |  |
| 3 | Projektauftrag prüfen |  |  |  | 0d → 5.75d |  | resources none → David Strainovic; Eden Bruderer |
| 4 | Rahmenbedingungen klären |  |  |  | 0d → 3.75d | 3 → 2 | resources none → David Strainovic; Eden Bruderer |
| 5 | Risikoanalyse |  |  |  | 0d → 3.75d |  | resources none → Eden Bruderer |
| 7 | **Konzept-Evaluation** | 2025-05-28 → 2025-05-29 (+1d) | 2025-05-29 → 2025-06-04 (+6d) | 1d? → 4d | 0d → none |  |  |
| 8 | Pflichtenheft |  | 2025-05-29 → 2025-05-30 (+1d) |  | 0d → 5d |  | resources none → David Strainovic |
| 9 | Expertengespräche durchführen |  | 2025-05-29 → 2025-06-03 (+5d) | 1d? → 3d | 0d → 3d |  | resources none → Eden Bruderer |
| 10 | MS: Projekt erfolgreich zu Ende gebracht | 2025-05-28 → 2025-05-29 (+1d) | 2025-05-28 → 2025-05-29 (+1d) |  | 1d → 4d |  |  |
| 11 | **Umsetzungsplanung** | 2025-05-29 → 2025-06-04 (+6d) | 2025-06-30 → 2025-07-07 (+7d) | 22d → 23d | 0d → 2d |  |  |
| 12 | Projektstrukturplan erstellen | 2025-05-30 → 2025-06-04 (+5d) | 2025-06-02 → 2025-06-06 (+4d) |  | 0d → 2d |  | resources none → David Strainovic |
| 13 | Liegenschaftsliste erstellen | 2025-06-03 → 2025-06-06 (+3d) | 2025-06-06 → 2025-06-12 (+6d) |  | 0d → 2d |  | resources none → Marvin Beak [50%]; Okram Itellof [50%] |
| 14 | Liegenschaften besichtigen | 2025-06-09 → 2025-06-12 (+3d) | 2025-06-27 → 2025-07-03 (+6d) |  | 0d → 2d |  | resources none → David Strainovic; Eden Bruderer; Marvin Beak [50%] |
| 15 | Nutzwertanalyse der Liegenschaften | 2025-06-30 → 2025-07-03 (+3d) | 2025-06-30 → 2025-07-07 (+7d) | 1d → 2d | 0d → 2d |  | resources none → Marvin Beak [50%] |
| 17 | MS: Für ein Gebäude entschieden | 2025-05-29 → 2025-06-04 (+6d) | 2025-05-29 → 2025-06-04 (+6d) |  | 22d → 25d |  |  |
| 18 | **Realisierung** | 2025-06-30 → 2025-07-04 (+4d) | 2025-07-29 → 2025-08-25 (+27d) | 21d → 36d | 0d → none |  |  |
| 19 | Mietvertrag prüfen & unterzeichnen | 2025-07-01 → 2025-07-04 (+3d) | 2025-07-02 → 2025-07-08 (+6d) |  | 6d → 3d |  | resources none → Bernd Notarius |
| 20 | Einrichtung bestellen | 2025-07-01 → 2025-07-04 (+3d) | 2025-07-29 → 2025-08-04 (+6d) |  | 0d → 12d |  | resources none → Eden Bruderer |
| 21 | Gebäude übernehmen | 2025-07-03 → 2025-07-08 (+5d) | 2025-07-07 → 2025-07-11 (+4d) |  | 6d → 3d |  | resources none → David Strainovic; Bernd Notarius |
| 22 | IT-Infrastruktur einrichten | 2025-07-08 → 2025-07-11 (+3d) | 2025-07-21 → 2025-08-15 (+25d) | 10d → 25d | 6d → 3d |  | resources none → Okram Itellof [50%] |
| 23 | MS: Standort bereit zur Einführung | 2025-06-30 → 2025-07-04 (+4d) | 2025-06-30 → 2025-07-04 (+4d) |  | 21d → 33d |  |  |
| 24 | **Einführung** | 2025-07-29 → 2025-08-04 (+6d) | 2025-08-01 → 2025-08-08 (+7d) | 3d → 4d | 0d → none |  |  |
| 25 | Neuer Standort den Mitarbeitern übergeben | 2025-07-30 → 2025-08-04 (+5d) | 2025-07-30 → 2025-08-05 (+6d) |  | 2d → 14d |  | resources none → Eden Bruderer |
| 26 | Einweihungsfest | 2025-07-30 → 2025-08-04 (+5d) | 2025-07-31 → 2025-08-06 (+6d) |  | 0d → 12d |  | resources none → Marvin Beak [50%] |
| 27 | Abschlussmeeting | 2025-08-01 → 2025-08-06 (+5d) | 2025-08-01 → 2025-08-07 (+6d) |  | 0d → 12d |  | resources none → David Strainovic; Eden Bruderer; Kevin Ammersinn; Marvin Beak [50%]; Okram Itellof [50%]; Rainer Ernst [50%] |
| 28 | MS: Projektergebnis erfolgreich getestet und eingeführt | 2025-07-29 → 2025-08-04 (+6d) | 2025-07-29 → 2025-08-04 (+6d) |  | 3d → 15d |  |  |

## Version 3 (saved 2025-05-14)

Note of the change: Update Projektstrukturplan_Neuer_Aussenstandort_Bruderer_Strainovic_v1.0.mpp

Last finish 2025-08-25 → 2025-10-29 (+65d).

Changed:

| ID | Task | Start | Finish | Duration | Total float | Other |
| --- | --- | --- | --- | --- | --- | --- |
| 1 | **Vor-Analyse** |  | 2025-05-29 → 2025-06-03 (+5d) | 4d → 7d | none → 0d |  |
| 3 | Projektauftrag prüfen |  | 2025-05-26 → 2025-05-29 (+3d) | 1d → 4d | 5.75d → 3d | resources David Strainovic; Eden Bruderer → Eden Bruderer [50%] |
| 4 | Rahmenbedingungen klären |  | 2025-05-27 → 2025-05-30 (+3d) | 1d → 4d | 3.75d → -3.8d | resources David Strainovic; Eden Bruderer → David Strainovic [50%] |
| 5 | Risikoanalyse | 2025-05-28 → 2025-06-02 (+5d) | 2025-05-28 → 2025-06-03 (+6d) | 1d → 2d | 3.75d → 0d | resources Eden Bruderer → Janis Wood [50%] |
| 7 | **Konzept-Evaluation** | 2025-05-29 → 2025-06-03 (+5d) | 2025-06-04 → 2025-06-11 (+7d) | 4d → 6d | none → 0d |  |
| 8 | Pflichtenheft | 2025-05-29 → 2025-06-04 (+6d) | 2025-05-30 → 2025-06-05 (+6d) | 1d → 2d | 5d → 4d | resources David Strainovic → Janis Wood [50%] |
| 9 | Expertengespräche durchführen | 2025-05-29 → 2025-06-04 (+6d) | 2025-06-03 → 2025-06-11 (+8d) | 3d → 6d | 3d → 0d | resources Eden Bruderer → Eden Bruderer [50%] |
| 10 | MS: Projekt erfolgreich zu Ende gebracht | 2025-05-29 → 2025-06-03 (+5d) | 2025-05-29 → 2025-06-03 (+5d) |  | 4d → 2.2d |  |
| 11 | **Umsetzungsplanung** | 2025-06-04 → 2025-06-11 (+7d) | 2025-07-07 → 2025-08-22 (+46d) | 23d → 51.5d | 2d → 0d |  |
| 12 | Projektstrukturplan erstellen | 2025-06-04 → 2025-06-12 (+8d) | 2025-06-06 → 2025-06-17 (+11d) | 2d → 4d | 2d → 0d | resources David Strainovic → David Strainovic [50%] |
| 13 | Liegenschaftsliste erstellen | 2025-06-06 → 2025-06-18 (+12d) | 2025-06-12 → 2025-06-27 (+15d) | 4d → 8d | 2d → 0d | resources Marvin Beak [50%]; Okram Itellof [50%] → Okram Itellof [50%] |
| 14 | Liegenschaften besichtigen | 2025-06-12 → 2025-06-30 (+18d) | 2025-07-03 → 2025-08-20 (+48d) | 15d → 37.5d | 2d → 0d | resources David Strainovic; Eden Bruderer; Marvin Beak [50%] → David Strainovic [50%]; Eden Bruderer [50%] |
| 15 | Nutzwertanalyse der Liegenschaften | 2025-07-03 → 2025-08-20 (+48d) | 2025-07-07 → 2025-08-22 (+46d) |  | 2d → -3.8d |  |
| 16 | Offerten für Einrichtung einholen | 2025-06-04 → 2025-06-12 (+8d) | 2025-06-11 → 2025-06-18 (+7d) |  | 20d → 46.5d |  |
| 17 | MS: Für ein Gebäude entschieden | 2025-06-04 → 2025-06-11 (+7d) | 2025-06-04 → 2025-06-11 (+7d) |  | 25d → 47.7d |  |
| 18 | **Realisierung** | 2025-07-04 → 2025-08-22 (+49d) | 2025-08-25 → 2025-10-21 (+57d) | 36d → 42d | none → 0d |  |
| 19 | Mietvertrag prüfen & unterzeichnen | 2025-07-04 → 2025-08-22 (+49d) | 2025-07-08 → 2025-08-28 (+51d) | 2d → 4d | 3d → 1d |  |
| 20 | Einrichtung bestellen | 2025-07-04 → 2025-08-22 (+49d) | 2025-08-04 → 2025-10-21 (+78d) | 21d → 42d | 12d → 0d | resources Eden Bruderer → Janis Wood [50%] |
| 21 | Gebäude übernehmen | 2025-07-08 → 2025-08-28 (+51d) | 2025-07-11 → 2025-09-15 (+66d) | 3d → 12d | 3d → 1d | resources David Strainovic; Bernd Notarius → David Strainovic [50%] |
| 22 | IT-Infrastruktur einrichten | 2025-07-11 → 2025-09-15 (+66d) | 2025-08-15 → 2025-10-20 (+66d) |  | 3d → 1d |  |
| 23 | MS: Standort bereit zur Einführung | 2025-07-04 → 2025-08-22 (+49d) | 2025-07-04 → 2025-08-22 (+49d) |  | 33d → 37.2d |  |
| 24 | **Einführung** | 2025-08-04 → 2025-10-21 (+78d) | 2025-08-08 → 2025-10-29 (+82d) | 4d → 5.6d | none → 0d |  |
| 25 | Neuer Standort den Mitarbeitern übergeben | 2025-08-04 → 2025-10-21 (+78d) | 2025-08-05 → 2025-10-22 (+78d) |  | 14d → 4.6d | resources Eden Bruderer → David Strainovic [50%]; Rainer Ernst [50%] |
| 26 | Einweihungsfest | 2025-08-04 → 2025-10-21 (+78d) | 2025-08-06 → 2025-10-23 (+78d) |  | 12d → 0d |  |
| 27 | Abschlussmeeting | 2025-08-06 → 2025-10-23 (+78d) | 2025-08-07 → 2025-10-29 (+83d) | 1d → 3.6d | 12d → 0d | resources David Strainovic; Eden Bruderer; Kevin Ammersinn; Marvin Beak [50%]; Okram Itellof [50%]; Rainer Ernst [50%] → David Strainovic [50%]; Eden Bruderer [50%]; Rainer Ernst [50%] |
| 28 | MS: Projektergebnis erfolgreich getestet und eingeführt | 2025-08-04 → 2025-10-21 (+78d) | 2025-08-04 → 2025-10-21 (+78d) |  | 15d → 5.6d |  |

## Version 4 (saved 2025-05-14)

Note of the change: Update Projektstrukturplan_Neuer_Aussenstandort_Bruderer_Strainovic_v1.0.mpp

Last finish 2025-10-29 → 2025-12-23 (+55d).

Changed:

| ID | Task | Start | Finish | Duration | Total float | Other |
| --- | --- | --- | --- | --- | --- | --- |
| 11 | **Umsetzungsplanung** |  | 2025-08-22 → 2025-10-14 (+53d) | 51.5d → 89d |  |  |
| 14 | Liegenschaften besichtigen |  | 2025-08-20 → 2025-10-10 (+51d) | 37.5d → 75d |  | resources David Strainovic [50%]; Eden Bruderer [50%] → Eden Bruderer [50%] |
| 15 | Nutzwertanalyse der Liegenschaften | 2025-08-20 → 2025-10-13 (+54d) | 2025-08-22 → 2025-10-14 (+53d) |  | -3.8d → 0d |  |
| 18 | **Realisierung** | 2025-08-22 → 2025-10-14 (+53d) | 2025-10-21 → 2025-12-11 (+51d) |  |  |  |
| 19 | Mietvertrag prüfen & unterzeichnen | 2025-08-22 → 2025-10-15 (+54d) | 2025-08-28 → 2025-10-20 (+53d) |  |  |  |
| 20 | Einrichtung bestellen | 2025-08-22 → 2025-10-15 (+54d) | 2025-10-21 → 2025-12-11 (+51d) |  |  |  |
| 21 | Gebäude übernehmen | 2025-08-28 → 2025-10-21 (+54d) | 2025-09-15 → 2025-11-05 (+51d) |  |  |  |
| 22 | IT-Infrastruktur einrichten | 2025-09-15 → 2025-11-06 (+52d) | 2025-10-20 → 2025-12-10 (+51d) |  |  |  |
| 23 | MS: Standort bereit zur Einführung | 2025-08-22 → 2025-10-14 (+53d) | 2025-08-22 → 2025-10-14 (+53d) |  | 37.2d → 42d |  |
| 24 | **Einführung** | 2025-10-21 → 2025-12-11 (+51d) | 2025-10-29 → 2025-12-23 (+55d) | 5.6d → 8d |  |  |
| 25 | Neuer Standort den Mitarbeitern übergeben | 2025-10-21 → 2025-12-12 (+52d) | 2025-10-22 → 2025-12-12 (+51d) |  | 4.6d → 7d | resources David Strainovic [50%]; Rainer Ernst [50%] → Rainer Ernst [50%]; Eden Bruderer [50%] |
| 26 | Einweihungsfest | 2025-10-21 → 2025-12-12 (+52d) | 2025-10-23 → 2025-12-15 (+53d) |  |  |  |
| 27 | Abschlussmeeting | 2025-10-23 → 2025-12-16 (+54d) | 2025-10-29 → 2025-12-23 (+55d) | 3.6d → 6d |  | resources David Strainovic [50%]; Eden Bruderer [50%]; Rainer Ernst [50%] → Eden Bruderer [50%]; Rainer Ernst [50%] |
| 28 | MS: Projektergebnis erfolgreich getestet und eingeführt | 2025-10-21 → 2025-12-11 (+51d) | 2025-10-21 → 2025-12-11 (+51d) |  | 5.6d → 8d |  |

## Version 5 (saved 2025-05-14)

Note of the change: Update Projektstrukturplan_Neuer_Aussenstandort_Bruderer_Strainovic_v1.0.mpp

Last finish stays 2025-12-23.

Changed:

| ID | Task | Other |
| --- | --- | --- |
| 1 | **Analyse** | was named Vor-Analyse |

## Version 6 (saved 2025-05-14)

Note of the change: Update Projektstrukturplan_Neuer_Aussenstandort_Bruderer_Strainovic_v1.0.mpp

Last finish 2025-12-23 → 2025-11-03 (-50d).

Removed: 2 Projektauftrag erstellen; 15 Nutzwertanalyse der Liegenschaften

Changed:

| ID | Task | Start | Finish | Duration | Total float | Predecessors | Other |
| --- | --- | --- | --- | --- | --- | --- | --- |
| 1 | **Analyse** |  | 2025-06-03 → 2025-05-30 (-4d) | 7d → 5d |  |  |  |
| 2 | Projektauftrag prüfen |  | 2025-05-29 → 2025-05-27 (-2d) | 4d → 2d | 3d → 0d |  |  |
| 3 | Rahmenbedingungen klären | 2025-05-27 → 2025-05-28 (+1d) | 2025-05-30 → 2025-05-29 (-1d) | 4d → 2d |  | Projektauftrag erstellen → 2 |  |
| 4 | Risikoanalyse | 2025-06-02 → 2025-05-30 (-3d) | 2025-06-03 → 2025-05-30 (-4d) | 2d → 1d |  |  | resources Janis Wood [50%] → Eden Bruderer [50%] |
| 6 | **Konzept-Evaluation** | 2025-06-03 → 2025-05-30 (-4d) | 2025-06-11 → 2025-06-05 (-6d) | 6d → 4d |  |  |  |
| 7 | Pflichtenheft erstellen | 2025-06-04 → 2025-06-02 (-2d) | 2025-06-05 → 2025-06-03 (-2d) |  | 4d → 2d |  | was named Pflichtenheft; resources Janis Wood [50%] → David Strainovic [50%] |
| 8 | Expertengespräche durchführen | 2025-06-04 → 2025-06-02 (-2d) | 2025-06-11 → 2025-06-05 (-6d) | 6d → 4d |  |  |  |
| 9 | MS: Projekt erfolgreich zu Ende gebracht | 2025-06-03 → 2025-05-30 (-4d) | 2025-06-03 → 2025-05-30 (-4d) |  | 2.2d → 4d |  |  |
| 10 | **Umsetzungsplanung** | 2025-06-11 → 2025-06-05 (-6d) | 2025-10-14 → 2025-08-04 (-71d) | 89d → 41.5d |  |  |  |
| 11 | Projektstrukturplan erstellen | 2025-06-12 → 2025-06-06 (-6d) | 2025-06-17 → 2025-06-12 (-5d) | 4d → 5d |  |  | resources David Strainovic [50%] → Eden Bruderer [50%] |
| 12 | Liegenschaftsliste erstellen | 2025-06-18 → 2025-06-13 (-5d) | 2025-06-27 → 2025-06-16 (-11d) | 8d → 1.5d |  |  | resources Okram Itellof [50%] → David Strainovic [50%] |
| 13 | Liegenschaften besichtigen | 2025-06-30 → 2025-06-16 (-14d) | 2025-10-10 → 2025-07-28 (-74d) | 75d → 30d |  |  | resources Eden Bruderer [50%] → Eden Bruderer [50%]; David Strainovic [50%] |
| 14 | Offerten für Einrichtung einholen | 2025-06-12 → 2025-07-28 (+46d) | 2025-06-18 → 2025-08-04 (+47d) |  | 46.5d → 0d | none → 13 | resources Marvin Beak [50%] → Eden Bruderer [50%] |
| 15 | MS: Für ein Gebäude entschieden | 2025-06-11 → 2025-06-05 (-6d) | 2025-06-11 → 2025-06-05 (-6d) |  | 47.7d → 41.5d |  |  |
| 16 | **Realisierung** | 2025-10-14 → 2025-08-04 (-71d) | 2025-12-11 → 2025-10-29 (-43d) | 42d → 62d |  |  |  |
| 17 | Mietvertrag prüfen & unterzeichnen | 2025-10-15 → 2025-08-04 (-72d) | 2025-10-20 → 2025-08-06 (-75d) | 4d → 2d | 1d → 0d |  | resources Bernd Notarius → Eden Bruderer [50%] |
| 18 | Einrichtung bestellen | 2025-10-15 → 2025-08-04 (-72d) | 2025-12-11 → 2025-09-15 (-87d) | 42d → 30d | 0d → 32d |  | resources Janis Wood [50%] → David Strainovic [50%] |
| 19 | Gebäude übernehmen | 2025-10-21 → 2025-08-06 (-76d) | 2025-11-05 → 2025-08-20 (-77d) | 12d → 10d | 1d → 0d |  |  |
| 20 | IT-Infrastruktur einrichten | 2025-11-06 → 2025-08-20 (-78d) | 2025-12-10 → 2025-10-29 (-42d) | 25d → 50d | 1d → 0d |  | resources Okram Itellof [50%] → Eden Bruderer [50%]; David Strainovic [50%] |
| 21 | MS: Standort bereit zur Einführung | 2025-10-14 → 2025-08-04 (-71d) | 2025-10-14 → 2025-08-04 (-71d) |  | 42d → 62d |  |  |
| 22 | **Einführung** | 2025-12-11 → 2025-10-29 (-43d) | 2025-12-23 → 2025-11-03 (-50d) | 8d → 3d |  |  |  |
| 23 | Neuer Standort den Mitarbeitern übergeben | 2025-12-12 → 2025-10-29 (-44d) | 2025-12-12 → 2025-10-30 (-43d) |  | 7d → 2d |  | resources Rainer Ernst [50%]; Eden Bruderer [50%] → Eden Bruderer [50%] |
| 24 | Einweihungsfest | 2025-12-12 → 2025-10-29 (-44d) | 2025-12-15 → 2025-10-31 (-45d) |  |  |  | resources Marvin Beak [50%] → David Strainovic [50%] |
| 25 | Abschlussmeeting | 2025-12-16 → 2025-10-31 (-46d) | 2025-12-23 → 2025-11-03 (-50d) | 6d → 1d |  |  | resources Eden Bruderer [50%]; Rainer Ernst [50%] → Eden Bruderer [50%]; David Strainovic [50%] |
| 26 | MS: Projektergebnis erfolgreich getestet und eingeführt | 2025-12-11 → 2025-10-29 (-43d) | 2025-12-11 → 2025-10-29 (-43d) |  | 8d → 3d |  |  |

## Version 7 (saved 2025-05-14)

Note of the change: Update Projektstrukturplan_Neuer_Aussenstandort_Bruderer_Strainovic_v1.0.mpp

Last finish 2025-11-03 → 2025-08-04 (-91d).

Added:

| ID | Task | Duration | Start | Finish | Predecessors | Resources |
| --- | --- | --- | --- | --- | --- | --- |
| 1 | **Projekt: Neuer Aussenstandort Frauenfeld** | 51d | 2025-05-26 | 2025-08-04 |  |  |
| 22 | Neuen Standort einrichten | 6d | 2025-07-23 | 2025-07-30 | 20 | David Strainovic [50%] |

Changed:

| ID | Task | Start | Finish | Duration | Total float | Predecessors | Other |
| --- | --- | --- | --- | --- | --- | --- | --- |
| 2 | **Analyse** |  | 2025-05-30 → 2025-05-29 (-1d) | 5d → 4d |  |  |  |
| 5 | Risikoanalyse | 2025-05-30 → 2025-05-28 (-2d) | 2025-05-30 → 2025-05-29 (-1d) | 1d → 2d |  | 4 → 3 |  |
| 7 | **Konzept-Evaluation** | 2025-05-30 → 2025-05-29 (-1d) | 2025-06-05 → 2025-06-03 (-2d) | 4d → 3d |  |  |  |
| 8 | Pflichtenheft erstellen | 2025-06-02 → 2025-05-30 (-3d) | 2025-06-03 → 2025-06-02 (-1d) |  | 2d → 1d |  |  |
| 9 | Expertengespräche durchführen | 2025-06-02 → 2025-05-30 (-3d) | 2025-06-05 → 2025-06-03 (-2d) | 4d → 3d |  |  |  |
| 10 | MS: Projekt erfolgreich zu Ende gebracht | 2025-05-30 → 2025-05-29 (-1d) | 2025-05-30 → 2025-05-29 (-1d) |  | 4d → 3d |  |  |
| 11 | **Umsetzungsplanung** | 2025-06-05 → 2025-06-03 (-2d) | 2025-08-04 → 2025-07-03 (-32d) | 41.5d → 22d |  |  |  |
| 12 | Projektstrukturplan erstellen | 2025-06-06 → 2025-06-04 (-2d) | 2025-06-12 → 2025-06-05 (-7d) | 5d → 2d |  |  |  |
| 13 | Liegenschaftsliste erstellen | 2025-06-13 → 2025-06-06 (-7d) | 2025-06-16 → 2025-06-09 (-7d) | 1.5d → 2d |  |  |  |
| 14 | Liegenschaften besichtigen | 2025-06-16 → 2025-06-10 (-6d) | 2025-07-28 → 2025-07-03 (-25d) | 30d → 18d |  |  | resources Eden Bruderer [50%]; David Strainovic [50%] → Eden Bruderer [50%] |
| 15 | Offerten für Einrichtung einholen | 2025-07-28 → 2025-06-10 (-48d) | 2025-08-04 → 2025-06-12 (-53d) | 5d → 3d | 0d → 15d | 14 → 13 | resources Eden Bruderer [50%] → David Strainovic [50%] |
| 16 | MS: Für ein Gebäude entschieden | 2025-06-05 → 2025-06-03 (-2d) | 2025-06-05 → 2025-06-03 (-2d) |  | 41.5d → 22d |  |  |
| 17 | **Realisierung** | 2025-08-04 → 2025-07-03 (-32d) | 2025-10-29 → 2025-07-30 (-91d) | 62d → 19d |  |  |  |
| 18 | Mietvertrag prüfen & unterzeichnen | 2025-08-04 → 2025-07-04 (-31d) | 2025-08-06 → 2025-07-08 (-29d) | 2d → 3d |  |  |  |
| 19 | Einrichtung bestellen | 2025-08-04 → 2025-07-04 (-31d) | 2025-09-15 → 2025-07-08 (-69d) | 30d → 3d | 32d → 16d |  |  |
| 20 | Gebäude übernehmen | 2025-08-06 → 2025-07-09 (-28d) | 2025-08-20 → 2025-07-22 (-29d) |  |  |  | resources David Strainovic [50%] → Eden Bruderer [50%] |
| 21 | IT-Infrastruktur einrichten | 2025-08-20 → 2025-07-23 (-28d) | 2025-10-29 → 2025-07-30 (-91d) | 50d → 6d |  |  | resources Eden Bruderer [50%]; David Strainovic [50%] → Eden Bruderer [50%] |
| 23 | MS: Standort bereit zur Einführung | 2025-08-04 → 2025-07-03 (-32d) | 2025-08-04 → 2025-07-03 (-32d) |  | 62d → 19d |  |  |
| 24 | **Einführung** | 2025-10-29 → 2025-07-30 (-91d) | 2025-11-03 → 2025-08-04 (-91d) |  |  |  |  |
| 25 | Neuer Standort den Mitarbeitern übergeben | 2025-10-29 → 2025-07-31 (-90d) | 2025-10-30 → 2025-08-01 (-90d) | 1d → 2d | 2d → 1d |  |  |
| 26 | Einweihungsfest | 2025-10-29 → 2025-07-31 (-90d) | 2025-10-31 → 2025-08-01 (-91d) |  |  |  |  |
| 27 | Abschlussmeeting | 2025-10-31 → 2025-08-04 (-88d) | 2025-11-03 → 2025-08-04 (-91d) |  |  |  |  |
| 28 | MS: Projektergebnis erfolgreich getestet und eingeführt | 2025-10-29 → 2025-07-30 (-91d) | 2025-10-29 → 2025-07-30 (-91d) |  |  |  |  |
